How a schedule from an exported table changed from version to version. A marks actual dates.

## Version 1 (saved 2026-04-16)

Note of the change: Update CSV to match SharePoint list column order and naming

| Task | Start | Finish |
| --- | --- | --- |
| 8W Mech OFF Insp Rollers 121-CV-001 | 22/04/2026 06:15 | 22/04/2026 09:15 |
| 8W Mech OFF Insp Rollers 121-CV-002 | 22/04/2026 09:15 | 22/04/2026 12:15 |
| Replace Impact rollers 121-CV-003 | 22/04/2026 08:15 | 23/04/2026 02:15 |
| 8W Mech OFF Insp Rollers 121-CV-003 | 22/04/2026 12:15 | 22/04/2026 15:15 |
| Change Impact Rollers 121-CV-004 | 22/04/2026 06:15 | 22/04/2026 12:15 |
| 8W Mech OFF Insp Rollers 121-CV-004 | 22/04/2026 15:15 | 23/04/2026 06:15 |
| 8W Mech OFF Insp Rollers 121-CV-005 | 23/04/2026 06:15 | 23/04/2026 09:15 |
| 8W Mech OFF Insp Rollers 121-CV-006 | 23/04/2026 09:15 | 23/04/2026 12:15 |
| 8W Mech OFF Insp Rollers 121-CV-024 | 23/04/2026 12:15 | 23/04/2026 15:15 |
| 8W Mech OFF Insp Rollers 121-FE-008 | 23/04/2026 15:15 | 24/04/2026 06:15 |
| 8W Mech OFF Insp Rollers 121-CV-010 | 24/04/2026 06:15 | 24/04/2026 09:15 |
| 8W Mech OFF Insp Rollers 121-CV-011 | 24/04/2026 09:15 | 24/04/2026 12:15 |
| 8W Mech OFF Insp Rollers 121-CV-012 | 24/04/2026 12:15 | 24/04/2026 15:15 |
| 8W Mech OFF Insp Rollers 122-CV-013 | 24/04/2026 15:15 | 25/04/2026 06:15 |
| 8W Mech OFF Insp Rollers 122-CV-014 | 25/04/2026 06:15 | 25/04/2026 09:15 |
| 8W Mech OFF Insp Rollers 122-CV-015 | 25/04/2026 09:15 | 25/04/2026 12:15 |
| 8W Mech OFF Insp Rollers 122-CV-018 | 25/04/2026 12:15 | 25/04/2026 15:15 |
| 8W Mech OFF Insp Rollers 122-CV-019 | 25/04/2026 15:15 | 26/04/2026 06:15 |
| 8W Mech OFF Insp Rollers 122-CV-020 | 26/04/2026 06:15 | 26/04/2026 09:15 |
| 8W Mech OFF Insp Rollers 122-CV-021 | 26/04/2026 09:15 | 26/04/2026 12:15 |
| BI - Replace Impact Rollers CV-021 | 26/04/2026 12:15 | 26/04/2026 16:15 |
| 8W Mech OFF Insp Rollers 122-ST-001 | 26/04/2026 16:15 | 27/04/2026 07:15 |
| 8W Mech OFF Insp Rollers 122-ST-002 | 27/04/2026 07:15 | 27/04/2026 10:15 |
| 8W Mech OFF Insp Rollers 123-CV-022 | 27/04/2026 10:15 | 27/04/2026 13:15 |
| 8W Mech OFF Insp Rollers 125-CV-025 | 27/04/2026 13:15 | 27/04/2026 16:15 |
| 8W Mech OFF Insp Rollers 125-CV-026 | 27/04/2026 16:15 | 28/04/2026 07:15 |
| 8W Mech OFF Insp Rollers 125-CV-027 | 28/04/2026 07:15 | 28/04/2026 10:15 |
| 8W Mech OFF Insp Rollers 125-CV-028 | 28/04/2026 10:15 | 28/04/2026 13:15 |

## Version 2 (saved 2026-04-17)

Note of the change: Update roller crew schedule from full April Gantt

Added:

| Task | Start | Finish |
| --- | --- | --- |
| 8W Mech OFF Insp Rollers 125-CV-023 | 28/04/2026 13:15 | 28/04/2026 16:15 |

Removed: 8W Mech OFF Insp Rollers 125-CV-025; 8W Mech OFF Insp Rollers 125-CV-026; 8W Mech OFF Insp Rollers 125-CV-027; 8W Mech OFF Insp Rollers 125-CV-028

Changed:

| Task | Start | Finish |
| --- | --- | --- |
| Replace Impact rollers 121-CV-003 | 22/04/2026 08:15 → 22/04/2026 12:15 | 23/04/2026 02:15 → 22/04/2026 18:15 |
| 8W Mech OFF Insp Rollers 121-CV-003 | 22/04/2026 12:15 → 23/04/2026 06:15 | 22/04/2026 15:15 → 23/04/2026 09:15 |
| Change Impact Rollers 121-CV-004 | 22/04/2026 06:15 → 23/04/2026 09:15 | 22/04/2026 12:15 → 23/04/2026 15:15 |
| 8W Mech OFF Insp Rollers 121-CV-004 | 22/04/2026 15:15 → 23/04/2026 15:15 | 23/04/2026 06:15 → 23/04/2026 18:15 |
| 8W Mech OFF Insp Rollers 121-CV-005 | 23/04/2026 06:15 → 24/04/2026 06:15 | 23/04/2026 09:15 → 24/04/2026 09:15 |
| 8W Mech OFF Insp Rollers 121-CV-006 | 23/04/2026 09:15 → 24/04/2026 09:15 | 23/04/2026 12:15 → 24/04/2026 12:15 |
| 8W Mech OFF Insp Rollers 121-CV-024 | 23/04/2026 12:15 → 24/04/2026 12:15 | 23/04/2026 15:15 → 24/04/2026 15:15 |
| 8W Mech OFF Insp Rollers 121-FE-008 | 23/04/2026 15:15 → 24/04/2026 15:15 | 24/04/2026 06:15 → 24/04/2026 18:15 |
| 8W Mech OFF Insp Rollers 121-CV-010 | 24/04/2026 06:15 → 25/04/2026 06:15 | 24/04/2026 09:15 → 25/04/2026 09:15 |
| 8W Mech OFF Insp Rollers 121-CV-011 | 24/04/2026 09:15 → 25/04/2026 09:15 | 24/04/2026 12:15 → 25/04/2026 12:15 |
| 8W Mech OFF Insp Rollers 121-CV-012 | 24/04/2026 12:15 → 25/04/2026 12:15 | 24/04/2026 15:15 → 25/04/2026 15:15 |
| 8W Mech OFF Insp Rollers 122-CV-013 | 24/04/2026 15:15 → 25/04/2026 15:15 | 25/04/2026 06:15 → 25/04/2026 18:15 |
| 8W Mech OFF Insp Rollers 122-CV-014 | 25/04/2026 06:15 → 26/04/2026 06:15 | 25/04/2026 09:15 → 26/04/2026 09:15 |
| 8W Mech OFF Insp Rollers 122-CV-015 | 25/04/2026 09:15 → 26/04/2026 09:15 | 25/04/2026 12:15 → 26/04/2026 12:15 |
| 8W Mech OFF Insp Rollers 122-CV-018 | 25/04/2026 12:15 → 26/04/2026 12:15 | 25/04/2026 15:15 → 26/04/2026 15:15 |
| 8W Mech OFF Insp Rollers 122-CV-019 | 25/04/2026 15:15 → 26/04/2026 15:15 | 26/04/2026 06:15 → 26/04/2026 18:15 |
| 8W Mech OFF Insp Rollers 122-CV-020 | 26/04/2026 06:15 → 27/04/2026 06:15 | 26/04/2026 09:15 → 27/04/2026 09:15 |
| 8W Mech OFF Insp Rollers 122-CV-021 | 26/04/2026 09:15 → 27/04/2026 09:15 | 26/04/2026 12:15 → 27/04/2026 12:15 |
| BI - Replace Impact Rollers CV-021 | 26/04/2026 12:15 → 27/04/2026 12:15 | 26/04/2026 16:15 → 27/04/2026 16:15 |
| 8W Mech OFF Insp Rollers 122-ST-001 | 26/04/2026 16:15 → 27/04/2026 16:15 | 27/04/2026 07:15 → 27/04/2026 19:15 |
| 8W Mech OFF Insp Rollers 122-ST-002 | 27/04/2026 07:15 → 28/04/2026 07:15 | 27/04/2026 10:15 → 28/04/2026 10:15 |
| 8W Mech OFF Insp Rollers 123-CV-022 | 27/04/2026 10:15 → 28/04/2026 10:15 | 27/04/2026 13:15 → 28/04/2026 13:15 |

## Version 3 (saved 2026-04-17)

Note of the change: Expand gantt to full shutdown scope (189 WOs, all SRG crews)

Added:

| Task | Start | Finish |
| --- | --- | --- |
| SC-005 Replace Feedbox End Beam Pre | 21/04/2026 06:00 | 25/04/2026 20:00 |
| Prepare/build up Spare Trommel | 21/04/2026 06:00 | 22/04/2026 06:00 |
| 8W Mech OFF Insp Skirts 121-CV-001 | 22/04/2026 06:15 | 22/04/2026 14:15 |
| 8W Mech OFF Insp Conv 121-CV-001 | 22/04/2026 06:15 | 22/04/2026 07:15 |
| 24W Mech OFF Reline Feeder FE-003 | 22/04/2026 06:15 | 25/04/2026 02:15 |
| Repl Mech Hungry Boards OFF | 22/04/2026 06:15 | 22/04/2026 12:15 |
| 8W Mech OFF Insp Conv 121-FE-008 | 22/04/2026 06:15 | 22/04/2026 07:15 |
| Mag 3 Blocked Line NDE | 22/04/2026 06:15 | 22/04/2026 12:15 |
| Damaged Grease line NE side | 22/04/2026 06:15 | 22/04/2026 11:15 |
| 8W Mech OFF Insp Conv 121-CV-002 | 22/04/2026 07:15 | 22/04/2026 08:15 |
| 8W Mech OFF Insp Conv 121-CV-003 | 22/04/2026 08:15 | 22/04/2026 09:15 |
| 8W Mech OFF Insp Conv 121-CV-004 | 22/04/2026 09:15 | 22/04/2026 10:15 |
| 8W Mech OFF Insp Conv 121-CV-005 | 22/04/2026 10:15 | 22/04/2026 11:15 |
| 8W Mech OFF Insp Conv 121-CV-006 | 22/04/2026 11:15 | 22/04/2026 12:15 |
| 8W Mech OFF Insp Conv 121-CV-024 | 22/04/2026 12:15 | 22/04/2026 13:15 |
| 8W Mech OFF Insp Skirts 121-CV-002 | 22/04/2026 14:15 | 22/04/2026 22:15 |
| 8W Mech OFF Insp Skirts 121-CV-003 | 22/04/2026 22:15 | 23/04/2026 06:15 |
| 8W Mech OFF Insp Skirts 121-CV-004 | 23/04/2026 06:15 | 23/04/2026 14:15 |
| Repl Mech Feeder Pan OFF | 27/04/2026 02:15 | 28/04/2026 02:15 |
| Change Impact Rollers | 23/04/2026 09:15 | 23/04/2026 15:15 |
| Raise hard Skirts | 23/04/2026 10:15 | 27/04/2026 07:00 |
| 8W Mech OFF Insp Skirts 121-CV-005 | 23/04/2026 14:15 | 23/04/2026 22:15 |
| 8W Mech OFF Insp Skirts 121-CV-006 | 23/04/2026 22:15 | 24/04/2026 06:15 |
| BN-004 Replace Lower Liners | 24/04/2026 06:00 | 27/04/2026 05:00 |
| CH-039 Replace Liners | 24/04/2026 06:00 | 25/04/2026 02:00 |
| 12W Mech OFF Svce Lube DMS | 24/04/2026 06:00 | 25/04/2026 07:00 |
| FL-008 Shim Belt Support Roller Frames | 24/04/2026 06:00 | 24/04/2026 14:00 |
| FL-008 Repair Discharge Scraper Frame | 24/04/2026 06:00 | 24/04/2026 15:00 |
| 8W Mech OFF Insp Skirts 121-FE-008 | 24/04/2026 06:15 | 24/04/2026 14:15 |
| 121-DV-001 Replace Cooling Fan | 24/04/2026 08:00 | 24/04/2026 12:00 |
| PP-022 Replace Valve Seal Kit | 24/04/2026 08:00 | 24/04/2026 17:00 |
| PP-044 Replace Valve | 24/04/2026 08:00 | 24/04/2026 13:30 |
| PP-253 Replace Valve Seal Kit | 24/04/2026 08:00 | 24/04/2026 15:00 |
| SC-017 Replace Underflow Spool | 24/04/2026 08:00 | 25/04/2026 02:00 |
| 8W Mech OFF Insp Conv 122-ST-001 | 24/04/2026 08:00 | 24/04/2026 09:00 |
| 8W Mech OFF Insp Skirts 122-ST-001 | 24/04/2026 08:00 | 24/04/2026 16:00 |
| ST-001 Change Conveyor Gearbox Oil | 24/04/2026 08:00 | 24/04/2026 11:30 |
| 8W Mech OFF Insp Conv 122-ST-002 | 24/04/2026 08:00 | 24/04/2026 09:00 |
| BI - Replace Suction & Discharge Valves | 24/04/2026 08:00 | 24/04/2026 10:00 |
| SA-004 Replace Sampler | 24/04/2026 08:00 | 24/04/2026 16:00 |
| CH-032 Replace Liners | 24/04/2026 10:00 | 24/04/2026 22:00 |
| 8W Mech OFF Insp Conv 121-CV-010 | 24/04/2026 10:00 | 24/04/2026 11:00 |
| BW-007 Replace Weightometer Roller | 24/04/2026 10:00 | 24/04/2026 14:00 |
| CV-013 Replace Bend Pulleys | 24/04/2026 10:00 | 25/04/2026 17:00 |
| Replace Grease lines Bends & T/U | 24/04/2026 10:00 | 24/04/2026 18:00 |
| CV-021 Soft Skirts Need Lowering | 24/04/2026 10:00 | 24/04/2026 14:00 |
| Repl Mech Cyclone OFF | 27/04/2026 22:00 | 28/04/2026 10:00 |
| 12W Mech OFF 3D Scan Mill 123-ML-001 Pre | 24/04/2026 10:00 | 27/04/2026 17:00 |
| 8W Mech OFF Insp Conv 121-CV-011 | 24/04/2026 11:00 | 24/04/2026 12:00 |
| 8W Mech OFF Insp Conv 121-CV-012 | 24/04/2026 12:00 | 24/04/2026 13:00 |
| 8W Mech OFF Insp Conv 122-CV-013 | 24/04/2026 13:00 | 24/04/2026 14:00 |
| 12W Mech OFF Repl Pump 122-PP-044 | 24/04/2026 13:30 | 25/04/2026 06:30 |
| BW-009 Replace Weightometer Roller | 24/04/2026 14:00 | 24/04/2026 18:00 |
| 8W Mech OFF Insp Conv 122-CV-014 | 24/04/2026 14:00 | 24/04/2026 15:00 |
| 8W Mech OFF Insp Skirts 121-CV-010 | 24/04/2026 14:15 | 24/04/2026 22:15 |
| 12W Mech OFF Svce Lube MS & Flot | 24/04/2026 14:30 | 25/04/2026 02:00 |
| Replace Agitator blades | 24/04/2026 14:30 | 25/04/2026 07:30 |
| PP-080 Changeout Spools at Flowmeter | 24/04/2026 14:30 | 25/04/2026 23:30 |
| BI-Replace Discharge valve | 24/04/2026 14:30 | 25/04/2026 01:30 |
| 8W Mech OFF Insp Conv 122-CV-015 | 24/04/2026 15:00 | 24/04/2026 16:00 |
| PP-254 Replace Valve Seal Kit | 24/04/2026 15:00 | 24/04/2026 23:00 |
| PP-158 Replace Valve Seal Kit | 24/04/2026 15:30 | 24/04/2026 22:30 |
| 8W Mech OFF Insp Conv 122-CV-018 | 24/04/2026 16:00 | 24/04/2026 17:00 |
| 8W Mech OFF Insp Skirts 122-ST-002 | 24/04/2026 16:00 | 25/04/2026 00:00 |
| 8W Mech OFF Insp Conv 122-CV-019 | 24/04/2026 17:00 | 24/04/2026 18:00 |
| Replace Grease lines, Bends & T/U | 24/04/2026 18:00 | 25/04/2026 02:00 |
| 8W Mech OFF Insp Conv 122-CV-020 | 24/04/2026 18:00 | 24/04/2026 19:00 |
| PP-023 Replace Valve Seal Kit | 24/04/2026 18:00 | 25/04/2026 03:00 |
| PP-038 Replace Scuttle Valve | 24/04/2026 18:00 | 25/04/2026 00:00 |
| 8W Mech OFF Insp Conv 122-CV-021 | 24/04/2026 19:00 | 24/04/2026 20:00 |
| 8W Mech OFF Insp Conv 123-CV-022 | 24/04/2026 20:00 | 24/04/2026 21:00 |
| 8W Mech OFF Insp Skirts 123-CV-022 | 24/04/2026 21:00 | 25/04/2026 05:00 |
| XV-4467 Replace Valve or Seal | 24/04/2026 22:00 | 25/04/2026 06:00 |
| 8W Mech OFF Insp Skirts 121-CV-011 | 24/04/2026 22:15 | 25/04/2026 06:15 |
| 126-XV-7629 Replace Valve | 24/04/2026 22:30 | 25/04/2026 04:30 |
| PP-254 Replace Drain Valve | 24/04/2026 23:00 | 25/04/2026 03:30 |
| ST-002 Adjust Soft Skirts | 25/04/2026 00:00 | 25/04/2026 03:00 |
| JHA and Permit | 25/04/2026 10:30 | 25/04/2026 16:00 |
| HP-050 fines cyclone overflow feed box | 25/04/2026 02:00 | 26/04/2026 10:00 |
| 8W Mech OFF Insp Skirts 125-CV-023 | 25/04/2026 03:00 | 25/04/2026 11:00 |
| PP-255 Replace Valve Seal Kit | 25/04/2026 03:30 | 25/04/2026 12:30 |
| Hole in suction spool | 25/04/2026 04:00 | 25/04/2026 10:00 |
| 8W Mech OFF Insp Conv 125-CV-023 | 25/04/2026 05:00 | 25/04/2026 06:00 |
| FC-028 Repl Drain Valv on HydrofloatCell | 25/04/2026 06:00 | 25/04/2026 10:30 |
| 8W Mech OFF Insp Skirts 121-CV-012 | 25/04/2026 06:15 | 25/04/2026 14:15 |
| SC-021 C/O NDE Exciter Oil | 25/04/2026 07:00 | 25/04/2026 09:00 |
| Insp Mech Mill Lube OFF | 25/04/2026 09:30 | 25/04/2026 12:00 |
| PP-025 Install Repaired Pipe Spool | 25/04/2026 10:00 | 25/04/2026 15:30 |
| 24W Mech OFF Svce Lube Grin&Clas | 25/04/2026 12:00 | 25/04/2026 12:30 |
| 6W Mech OFF Insp Lube Grin&Clas | 25/04/2026 12:00 | 25/04/2026 15:00 |
| 8W Mech OFF Insp Skirts 122-CV-013 | 25/04/2026 12:15 | 25/04/2026 20:15 |
| replace drain valve MV-291 | 25/04/2026 13:30 | 25/04/2026 18:00 |
| Inform OPS for Isolations | 25/04/2026 15:00 | 25/04/2026 18:30 |
| PP-033 Replace Valve Seal Kit | 25/04/2026 15:30 | 25/04/2026 22:30 |
| PP-073 Replace Leaking Valve | 25/04/2026 16:00 | 26/04/2026 01:30 |
| 12W Mech OFF Repl Pump PP049 | 25/04/2026 17:00 | 26/04/2026 06:00 |
| SN-007 Install Permalube - Ring DRV | 25/04/2026 18:30 | 26/04/2026 03:30 |
| Review JHA, SWI & Lock On | 27/04/2026 08:30 | 28/04/2026 03:30 |
| PP-258 Replace Discharge Pipework | 25/04/2026 20:00 | 26/04/2026 06:00 |
| FL-008 Repair Feed Distributor Rubber | 25/04/2026 20:00 | 26/04/2026 14:00 |
| 8W Mech OFF Insp Skirts 122-CV-014 | 25/04/2026 20:15 | 26/04/2026 04:15 |
| Parent Metal Repair and Reline FE011 | 25/04/2026 22:00 | 26/04/2026 04:00 |
| 12W Mech OFF Svce Cent Pump PP036 | 25/04/2026 22:30 | 26/04/2026 02:30 |
| PP-104 Replace Valve | 25/04/2026 23:30 | 26/04/2026 07:30 |
| PP-074 Replace Leaking Valve | 26/04/2026 01:30 | 26/04/2026 11:00 |
| 24W Mech OFF C/O Pump PP037 | 26/04/2026 02:30 | 26/04/2026 10:30 |
| SN-008 Install Permalube - Ring DRV | 26/04/2026 03:30 | 26/04/2026 12:30 |
| 8W Mech OFF Insp Skirts 122-CV-015 | 26/04/2026 04:15 | 26/04/2026 12:15 |
| 12W Mech OFF Repl Pump 122-PP-041 | 26/04/2026 06:00 | 26/04/2026 12:00 |
| 12W Mech OFF Repl Pump PP050 | 26/04/2026 06:00 | 26/04/2026 23:00 |
| SC-015 Replace Motor | 26/04/2026 06:00 | 26/04/2026 13:00 |
| SA-044 Replace Sampler Spool | 26/04/2026 06:00 | 26/04/2026 19:00 |
| PP-144 Replace Leaking Valve | 26/04/2026 07:30 | 26/04/2026 15:00 |
| 12W Mech OFF Repl Pump 122-PP-042 | 26/04/2026 10:30 | 26/04/2026 23:30 |
| CH-029 Replace Liners | 26/04/2026 11:00 | 27/04/2026 00:00 |
| XV-4443 Replace Suction Valve | 26/04/2026 11:00 | 26/04/2026 21:00 |
| Replace Soft skirts | 26/04/2026 12:15 | 27/04/2026 00:15 |
| 12W Mech OFF Svce Lube Conc Filt | 26/04/2026 12:30 | 26/04/2026 15:00 |
| 24W Mech OFF Insp Thick 126-TH-002 | 26/04/2026 14:00 | 26/04/2026 15:00 |
| 8W Mech OFF Insp Skirts 122-CV-018 | 26/04/2026 14:15 | 26/04/2026 22:15 |
| 12W Lube OFF Insp Oil Smpl Conc Filt | 26/04/2026 15:00 | 26/04/2026 17:00 |
| CV-023 Gearbox oil C/O | 26/04/2026 15:00 | 26/04/2026 19:30 |
| 48W Mech OFF Insp Thick 126-TH-003 | 26/04/2026 15:00 | 26/04/2026 21:30 |
| PP-039 Replace Valve Seal Kit | 26/04/2026 19:30 | 27/04/2026 02:30 |
| 12W Mech OFF Svce Lube Tails | 26/04/2026 19:30 | 26/04/2026 21:30 |
| PP-077 Replace Valve Seal Kit | 26/04/2026 21:00 | 27/04/2026 06:00 |
| 12W Mech OFF Repl Pump PP051 | 26/04/2026 23:00 | 27/04/2026 12:00 |
| 12W Mech OFF Repl Pump 122-PP-043 | 26/04/2026 23:30 | 27/04/2026 12:30 |
| 8W Mech OFF Insp Skirts 122-CV-019 | 27/04/2026 00:15 | 27/04/2026 08:15 |
| Unbolt T-Piece Flange To Access Insert | 27/04/2026 05:15 | 27/04/2026 07:45 |
| 48W Mech OFF Repl Pump PP039 | 27/04/2026 02:30 | 27/04/2026 15:30 |
| XV-5004 Replace Discharge Valve Seals | 27/04/2026 06:00 | 27/04/2026 14:00 |
| PP-088 Replace Gland Water Valve | 27/04/2026 07:45 | 27/04/2026 14:45 |
| 8W Mech OFF Insp Skirts 122-CV-020 | 27/04/2026 08:15 | 27/04/2026 16:15 |
| BI - REPLACE IMPACT ROLLERS | 27/04/2026 12:15 | 27/04/2026 16:15 |
| XV-3350 suction valve need replacing | 27/04/2026 13:00 | 27/04/2026 18:00 |
| 8W Mech OFF Insp Skirts 122-CV-021 | 27/04/2026 14:15 | 27/04/2026 22:15 |
| Insp Mech Thick HPU OFF | 28/04/2026 00:15 | 28/04/2026 01:15 |
| 48W Mech OFF Insp Tripper 125-XM-016 | 27/04/2026 15:45 | 27/04/2026 19:45 |
| PP-080 Replace Hose | 27/04/2026 17:00 | 28/04/2026 03:00 |
| PP-252 Replace Valve Seal Kit | 27/04/2026 18:00 | 28/04/2026 01:00 |
| HP-40 Clear Blockage | 28/04/2026 00:00 | 28/04/2026 05:00 |
| TH-003 RESET GUIDE SHIMS | 28/04/2026 01:15 | 28/04/2026 04:15 |
| SA-020 Saunders Valve Cant Be Shut | 28/04/2026 03:00 | 28/04/2026 06:00 |
| PP-086 Replace Valve Seal Kit | 28/04/2026 03:30 | 28/04/2026 12:30 |
| PP-067 Replace Valve Seal Kit | 28/04/2026 04:15 | 28/04/2026 13:15 |

Removed: Change Impact Rollers 121-CV-004; BI - Replace Impact Rollers CV-021
